# Cycles_develpment_v1.3

Schedule from MS Project, 2008-02-19 to 2008-08-22, A marks actual dates.
Hewlett-Packard

## Calendars

- Estándar: Mon-Fri 08:00-14:00, 15:00-17:00; Sat-Sun off. Exceptions (off unless hours are given): 2008-03-29 08:00-14:00, 15:00-17:00.

## Resources

| Resource |
| --- |
| Palatnik |
| Catalina |

## Schedule

| ID | WBS | Task | Type | Duration | Start | Finish | Predecessors | Complete | Baseline start | Baseline finish | Baseline duration | Constraint |
| --- | --- | --- | --- | --- | --- | --- | --- | --- | --- | --- | --- | --- |
| 1 | 1 | **CYCLE 1.0.0. DEVELOPMENT** |  | 4d | 2008-02-19 A | 2008-02-22 A |  | 100% | 2008-02-19 | 2008-02-22 | 4d |  |
| 2 | 1.1 | **Content integration** |  | 1d | 2008-02-19 A | 2008-02-19 A |  | 100% | 2008-02-19 | 2008-02-19 | 1d |  |
| 3 | 1.1.1 | Topics first level & training modules (link to moodle) |  | 1d | 2008-02-19 A | 2008-02-19 A |  | 100% | 2008-02-19 | 2008-02-19 | 1d | start no earlier than 2008-02-19 |
| 4 | 1.2 | **Help System Building & Review** |  | 3d | 2008-02-20 A | 2008-02-22 A |  | 100% | 2008-02-20 | 2008-02-22 | 3d |  |
| 5 | 1.2.1 | Building |  | 1d | 2008-02-20 A | 2008-02-20 A |  | 100% | 2008-02-20 | 2008-02-20 | 1d | start no earlier than 2008-02-20 |
| 6 | 1.2.2 | Document & Review |  | 1d | 2008-02-21 A | 2008-02-21 A | 5 | 100% | 2008-02-21 | 2008-02-21 | 1d |  |
| 7 | 1.2.3 | Backup |  | 1d | 2008-02-22 A | 2008-02-22 A |  | 100% | 2008-02-22 | 2008-02-22 | 1d |  |
| 8 | 1.2.4 | Publish | milestone | 0d | 2008-02-22 A | 2008-02-22 A |  | 100% | 2008-02-22 | 2008-02-22 | 0d |  |
| 9 | 2 | **CYCLE 1.1.0. DEVELOPMENT** |  | 5d | 2008-02-25 A | 2008-02-29 A |  | 100% | 2008-02-25 | 2008-02-29 | 5d |  |
| 10 | 2.1 | **Text Pre-process** |  | 1d | 2008-02-25 A | 2008-02-25 A |  | 100% | 2008-02-25 | 2008-02-25 | 1d |  |
| 11 | 2.1.1 | Formatting FR,SP (MO1,Mo2) |  | 1d | 2008-02-25 A | 2008-02-25 A |  | 100% | 2008-02-25 | 2008-02-25 | 1d | start no earlier than 2008-02-25 |
| 12 | 2.2 | **Content integration** |  | 2d | 2008-02-26 A | 2008-02-27 A | 10 | 100% | 2008-02-26 | 2008-02-27 | 2d |  |
| 13 | 2.2.1 | Training materials (complete) |  | 1d | 2008-02-26 A | 2008-02-26 A |  | 100% | 2008-02-26 | 2008-02-26 | 1d | start no earlier than 2008-02-26 |
| 14 | 2.2.2 | EN - MO1 - MO4 Complete |  | 1d | 2008-02-27 A | 2008-02-27 A | 13 | 100% | 2008-02-27 | 2008-02-27 | 1d | start no earlier than 2008-02-26 |
| 15 | 2.3 | **Help System Building & Review** |  | 3d | 2008-02-27 A | 2008-02-29 A |  | 100% | 2008-02-27 | 2008-02-29 | 3d |  |
| 16 | 2.3.1 | Building |  | 1d | 2008-02-27 A | 2008-02-27 A |  | 100% | 2008-02-27 | 2008-02-27 | 1d | start no earlier than 2008-02-27 |
| 17 | 2.3.2 | Document & Review |  | 1d | 2008-02-28 A | 2008-02-28 A | 16 | 100% | 2008-02-28 | 2008-02-28 | 1d |  |
| 18 | 2.3.3 | Backup |  | 1d | 2008-02-29 A | 2008-02-29 A | 17 | 100% | 2008-02-29 | 2008-02-29 | 1d | start no earlier than 2008-02-29 |
| 19 | 2.3.4 | Publish | milestone | 0d | 2008-02-29 A | 2008-02-29 A |  | 100% | 2008-02-29 | 2008-02-29 | 0d | start no earlier than 2008-02-29 |
| 20 | 3 | **CYCLE 1.2.0. DEVELOPMENT** |  | 5d | 2008-03-03 A | 2008-03-07 A |  | 100% | 2008-03-03 | 2008-03-07 | 5d |  |
| 21 | 3.1 | **Text Pre-process** |  | 3d | 2008-03-03 A | 2008-03-05 A |  | 100% | 2008-03-03 | 2008-03-05 | 3d |  |
| 22 | 3.1.1 | Formatting FR (MO3 & 4) |  | 1d | 2008-03-03 A | 2008-03-03 A |  | 100% | 2008-03-03 | 2008-03-03 | 1d | start no earlier than 2008-03-03 |
| 23 | 3.1.2 | Formatting EN FR SP MO10 |  | 1d | 2008-03-05 A | 2008-03-05 A |  | 100% | 2008-03-05 | 2008-03-05 | 1d | finish no earlier than 2008-03-05 |
| 24 | 3.2 | **Content integration** |  | 3d | 2008-03-04 A | 2008-03-06 A |  | 100% | 2008-03-04 | 2008-03-06 | 3d |  |
| 25 | 3.2.1 | EN FR SP MO10 |  | 1d | 2008-03-04 A | 2008-03-04 A |  | 100% | 2008-03-04 | 2008-03-04 | 1d | start no earlier than 2008-03-04 |
| 26 | 3.2.2 | FR MO3 |  | 1d | 2008-03-05 A | 2008-03-05 A |  | 100% | 2008-03-05 | 2008-03-05 | 1d | finish no earlier than 2008-03-05 |
| 27 | 3.2.3 | FR MO4 |  | 1d | 2008-03-06 A | 2008-03-06 A |  | 100% | 2008-03-06 | 2008-03-06 | 1d | start no earlier than 2008-03-06 |

Notes:
- 6: 1) Draft importing MS Word into Help Studio System / 2) Draft Trabajando con build flags and build profiles / 3) Draft Versioning / 4) Draft Typographic conventions
- 17: 1) Bugs with "entire help localized" Changed "protocol of Cartagena" to Spanish / 2) Changes in the structure of the Release Note document. / 3)Draft "Trabajando en equipo"

| ID | WBS | Task | Type | Duration | Start | Finish | Predecessors | Complete | Baseline start | Baseline finish | Baseline duration | Constraint |
| --- | --- | --- | --- | --- | --- | --- | --- | --- | --- | --- | --- | --- |
| 28 | 3.3 | **Procedure & documentation** |  | 1d | 2008-03-05 A | 2008-03-05 A |  | 100% | 2008-03-05 | 2008-03-05 | 1d |  |
| 29 | 3.3.1 | Procedures |  | 1d | 2008-03-05 A | 2008-03-05 A |  | 100% | 2008-03-05 | 2008-03-05 | 1d | start no earlier than 2008-03-05 |
| 30 | 3.4 | **Help System Building & Review** |  | 2d | 2008-03-06 A | 2008-03-07 A |  | 100% | 2008-03-06 | 2008-03-07 | 2d |  |
| 31 | 3.4.1 | Building (1st level FR topics) |  | 1d | 2008-03-06 A | 2008-03-06 A |  | 100% | 2008-03-06 | 2008-03-06 | 1d | start no earlier than 2008-03-06 |
| 32 | 3.4.2 | Document & Review |  | 1d | 2008-03-06 A | 2008-03-06 A |  | 100% | 2008-03-06 | 2008-03-06 | 1d | start no earlier than 2008-03-06 |
| 33 | 3.4.3 | Backup |  | 1d | 2008-03-07 A | 2008-03-07 A | 32 | 100% | 2008-03-07 | 2008-03-07 | 1d | start no earlier than 2008-03-07 |
| 34 | 3.4.4 | Publish | milestone | 0d | 2008-03-07 A | 2008-03-07 A |  | 100% | 2008-03-07 | 2008-03-07 | 0d | start no earlier than 2008-03-07 |
| 35 | 4 | **CYCLE 1.3.0. DEVELOPMENT** |  | 4d | 2008-03-10 A | 2008-03-13 A |  | 100% | 2008-03-10 | 2008-03-13 | 4d |  |
| 36 | 4.1 | **Text Pre-Process & revision** |  | 1d | 2008-03-10 A | 2008-03-10 A |  | 100% | 2008-03-10 | 2008-03-10 | 1d |  |
| 37 | 4.1.1 | FR - EN MO 3 & 4 Images fixed |  | 1d | 2008-03-10 A | 2008-03-10 A |  | 100% | 2008-03-10 | 2008-03-10 | 1d | start no earlier than 2008-03-10 |
| 38 | 4.1.2 | En Training materials Links revision |  | 1d | 2008-03-10 A | 2008-03-10 A |  | 100% | 2008-03-10 | 2008-03-10 | 1d | start no earlier than 2008-03-10 |
| 39 | 4.2 | **Content integration** |  | 1d | 2008-03-11 A | 2008-03-11 A |  | 100% | 2008-03-11 | 2008-03-11 | 1d |  |
| 40 | 4.2.1 | FR - EN MO 3 & 4 Images fixed |  | 1d | 2008-03-11 A | 2008-03-11 A |  | 100% | 2008-03-11 | 2008-03-11 | 1d | start no earlier than 2008-03-11 |
| 41 | 4.2.2 | EN Training materials |  | 1d | 2008-03-11 A | 2008-03-11 A |  | 100% | 2008-03-11 | 2008-03-11 | 1d | start no earlier than 2008-03-11 |
| 42 | 4.3 | **Procedure & documentation** |  | 1d | 2008-03-10 A | 2008-03-10 A |  | 100% | 2008-03-10 | 2008-03-10 | 1d |  |
| 43 | 4.3.1 | Draft Lessons Learned |  | 1d | 2008-03-10 A | 2008-03-10 A |  | 100% | 2008-03-10 | 2008-03-10 | 1d | start no earlier than 2008-03-10 |
| 44 | 4.4 | **Help System Building & Review** |  | 3d | 2008-03-11 A | 2008-03-13 A |  | 100% | 2008-03-11 | 2008-03-13 | 3d |  |
| 45 | 4.4.1 | Building |  | 1d | 2008-03-11 A | 2008-03-11 A |  | 100% | 2008-03-11 | 2008-03-11 | 1d | start no earlier than 2008-03-11 |
| 46 | 4.4.2 | Document & Review |  | 1d | 2008-03-12 A | 2008-03-12 A |  | 100% | 2008-03-12 | 2008-03-12 | 1d | start no earlier than 2008-03-12 |
| 47 | 4.4.3 | Backup |  | 1d | 2008-03-13 A | 2008-03-13 A |  | 100% | 2008-03-13 | 2008-03-13 | 1d | start no earlier than 2008-03-13 |
| 48 | 4.4.4 | Publish | milestone | 0d | 2008-03-13 A | 2008-03-13 A |  | 100% | 2008-03-13 | 2008-03-13 | 0d? | start no earlier than 2008-03-13 |
| 49 | 5 | **CYCLE 2.0.0.** |  | 36d | 2008-03-24 A | 2008-05-09 A |  | 100% | 2008-03-24 | 2008-05-09 | 36d |  |
| 50 | 5.1 | **Text Pre-process** |  | 12d | 2008-03-31 A | 2008-04-15 A |  | 100% | 2008-03-31 | 2008-04-15 | 12d |  |
| 51 | 5.1.1 | Translate SP (CBD Review) |  | 1d | 2008-03-31 A | 2008-03-31 A |  | 100% | 2008-03-31 | 2008-03-31 | 1d | start no earlier than 2008-03-31 |
| 52 | 5.1.2 | Formatting RU MO01& MO2 |  | 1d | 2008-03-31 A | 2008-03-31 A |  | 100% | 2008-03-31 | 2008-03-31 | 1d | start no earlier than 2008-03-31 |
| 53 | 5.1.3 | Formatting RU AR (MO1-MO4 & MO10) |  | 1d | 2008-04-07 A | 2008-04-07 A |  | 100% | 2008-04-07 | 2008-04-07 | 1d | start no earlier than 2008-04-07 |
| 54 | 5.1.4 | Formatting CH (MO1-MO4 & MO10) |  | 2d | 2008-04-14 A | 2008-04-15 A |  | 100% | 2008-04-14 | 2008-04-15 | 2d | start no earlier than 2008-04-14 |

Notes:
- 29: 1.TM_BCH_Site_map _topics_v1.2.0 (xls) / 2.Modules. / a.English ( MO10 ) / b.Spanish (MO10) / c.French (MO3,MO4 & MO10) / 3.Procedures/ Instructional /form documents: / a.DEV.FO.01 Release Check List / b.DEV.IN.01. Versions and Builds / c.DEV.IN.02.Typographic conventions / d.DEV.PR.01 Importing documents into Help Studio / e. Ftp Directory contents: Content Tree. (pdf) / 4.Project Management / a.TM_BCH_Project Management_v1.3 / b.TM_BCH_MO_State_v2 / 5.Template/ a.TM_BCH_Process_Template_v2/ 6.Screenshots / a.French first level topics (20000 - 27000 jpg)
- 31: Training modules was missing in this building. This bug was fixed on Saturday 8/3
- 43: a)TM_BCH_Project Management_v1.3 / b) TM_BCH_MO_State_v1.3.0 / c) DEV.FO.01. Release Check List / d) DEV.PR.01 Importing documents into Help Studio / e)DEV.PR.02 Team working with help Studio through Visual Source Safe / f) DEV.IN.03 Lessons learned

| ID | WBS | Task | Type | Duration | Start | Finish | Complete | Baseline start | Baseline finish | Baseline duration | Constraint |
| --- | --- | --- | --- | --- | --- | --- | --- | --- | --- | --- | --- |
| 55 | 5.2 | **Software development** |  | 36d | 2008-03-24 A | 2008-05-09 A | 100% | 2008-03-24 | 2008-05-09 | 36d |  |
| 56 | 5.2.1 | Help System (Table of content) path Highlight |  | 4d | 2008-03-24 A | 2008-03-27 A | 100% | 2008-03-24 | 2008-03-27 | 4d | start no earlier than 2008-03-24 |
| 57 | 5.2.2 | Plug-in Highlight (improved) |  | 10d | 2008-04-28 A | 2008-05-09 A | 100% | 2008-04-28 | 2008-05-09 | 10d | start no earlier than 2008-04-28 |
| 58 | 5.2.3 | Help System Template |  | 10d | 2008-04-28 A | 2008-05-09 A | 100% | 2008-04-28 | 2008-05-09 | 10d | finish no earlier than 2008-05-09 |
| 59 | 5.3 | **CBD MO document review** |  | 13d | 2008-03-26 A | 2008-04-10 A | 100% | 2008-03-26 | 2008-04-10 | 13d |  |
| 60 | 5.3.1 | Examine MO 1-4 & MO10 CBD Changes |  | 4d | 2008-03-26 A | 2008-03-29 A | 100% | 2008-03-26 | 2008-03-29 | 4d | start no earlier than 2008-03-26 |
| 61 | 5.3.2 | Help System impact |  | 2d | 2008-04-09 A | 2008-04-10 A | 100% | 2008-04-09 | 2008-04-10 | 2d | start no earlier than 2008-04-09 |
| 62 | 5.4 | **Contact RA AR CH Native Speakers** |  | 1d | 2008-03-24 A | 2008-03-25 A | 100% | 2008-03-24 | 2008-03-25 | 1d |  |
| 63 | 5.4.1 | AR | milestone | 0d | 2008-03-24 A | 2008-03-24 A | 100% | 2008-03-24 | 2008-03-24 | 0d? | start no earlier than 2008-03-24 |
| 64 | 5.4.2 | RU | milestone | 0d | 2008-03-25 A | 2008-03-25 A | 100% | 2008-03-25 | 2008-03-25 | 0d? | start no earlier than 2008-03-25 |
| 65 | 5.4.3 | CH | milestone | 0d | 2008-03-25 A | 2008-03-25 A | 100% | 2008-03-25 | 2008-03-25 | 0d? | start no earlier than 2008-03-25 |
| 66 | 5.5 | **Send RA (last CBD MO Review)** |  | 25d | 2008-03-26 A | 2008-04-29 A | 100% | 2008-03-26 | 2008-04-29 | 25d |  |
| 67 | 5.5.1 | **Send FR** |  | 13d | 2008-03-26 A | 2008-04-11 A | 100% | 2008-03-26 | 2008-04-11 | 13d |  |
| 68 | 5.5.1.1 | MO1,2 & 3 | milestone | 0d | 2008-03-26 A | 2008-03-26 A | 100% | 2008-03-26 | 2008-03-26 | 0d? | start no earlier than 2008-03-26 |
| 69 | 5.5.1.2 | MO4 | milestone | 0d | 2008-04-10 A | 2008-04-10 A | 100% | 2008-04-10 | 2008-04-10 | 0d? | start no earlier than 2008-04-10 |
| 70 | 5.5.1.3 | MO10 | milestone | 0d | 2008-04-11 A | 2008-04-11 A | 100% | 2008-04-11 | 2008-04-11 | 0d? | start no earlier than 2008-04-11 |
| 71 | 5.5.2 | **Send RU** |  | 15d | 2008-04-01 A | 2008-04-22 A | 100% | 2008-04-01 | 2008-04-22 | 15d |  |
| 72 | 5.5.2.1 | MO1 & MO2 | milestone | 0d | 2008-04-01 A | 2008-04-01 A | 100% | 2008-04-01 | 2008-04-01 | 0d? | start no earlier than 2008-04-01 |
| 73 | 5.5.2.2 | MO3 | milestone | 0d | 2008-04-10 A | 2008-04-10 A | 100% | 2008-04-10 | 2008-04-10 | 0d? | start no earlier than 2008-04-10 |
| 74 | 5.5.2.3 | MO4 | milestone | 0d | 2008-04-22 A | 2008-04-22 A | 100% | 2008-04-22 | 2008-04-22 | 0d? | start no earlier than 2008-04-22 |
| 75 | 5.5.3 | **Send AR** |  | 21d | 2008-03-31 A | 2008-04-29 A | 100% | 2008-03-31 | 2008-04-29 | 21d |  |
| 76 | 5.5.3.1 | MO1 | milestone | 0d | 2008-03-31 A | 2008-03-31 A | 100% | 2008-03-31 | 2008-03-31 | 0d? | start no earlier than 2008-03-31 |
| 77 | 5.5.3.2 | MO2 | milestone | 0d | 2008-04-07 A | 2008-04-07 A | 100% | 2008-04-07 | 2008-04-07 | 0d? | start no earlier than 2008-04-07 |
| 78 | 5.5.3.3 | MO3 | milestone | 0d | 2008-04-21 A | 2008-04-21 A | 100% | 2008-04-21 | 2008-04-21 | 0d? | start no earlier than 2008-04-21 |
| 79 | 5.5.3.4 | MO4 | milestone | 0d | 2008-04-29 A | 2008-04-29 A | 100% | 2008-04-29 | 2008-04-29 | 0d? | start no earlier than 2008-04-29 |
| 80 | 5.5.3.5 | MO10 | milestone | 0d | 2008-04-11 A | 2008-04-11 A | 100% | 2008-04-11 | 2008-04-11 | 0d? | start no earlier than 2008-04-11 |

| ID | WBS | Task | Type | Duration | Start | Finish | Complete | Baseline start | Baseline finish | Baseline duration | Constraint |
| --- | --- | --- | --- | --- | --- | --- | --- | --- | --- | --- | --- |
| 81 | 5.5.4 | **Send SP** |  | 5d | 2008-03-27 A | 2008-04-02 A | 100% | 2008-03-27 | 2008-04-02 | 5d |  |
| 82 | 5.5.4.1 | MO1 | milestone | 0d | 2008-03-27 A | 2008-03-27 A | 100% | 2008-03-27 | 2008-03-27 | 0d? | start no earlier than 2008-03-27 |
| 83 | 5.5.4.2 | MO2 | milestone | 0d | 2008-04-02 A | 2008-04-02 A | 100% | 2008-04-02 | 2008-04-02 | 0d? | start no earlier than 2008-04-02 |
| 84 | 5.6 | **Receive RA (last CBD MO Review)** |  | 20d | 2008-03-29 A | 2008-04-25 A | 100% | 2008-03-29 | 2008-04-25 | 20d |  |
| 85 | 5.6.1 | **Receive FR** |  | 16d | 2008-03-29 A | 2008-04-21 A | 100% | 2008-03-29 | 2008-04-21 | 16d |  |
| 86 | 5.6.1.1 | MO1 | milestone | 0d | 2008-03-29 A | 2008-03-29 A | 100% | 2008-03-29 | 2008-03-29 | 0d? | start no earlier than 2008-03-29 |
| 87 | 5.6.1.2 | MO2 | milestone | 0d | 2008-03-31 A | 2008-03-31 A | 100% | 2008-03-31 | 2008-03-31 | 0d? | start no earlier than 2008-03-31 |
| 88 | 5.6.1.3 | MO3 | milestone | 0d | 2008-04-07 A | 2008-04-07 A | 100% | 2008-04-07 | 2008-04-07 | 0d? | start no earlier than 2008-04-07 |
| 89 | 5.6.1.4 | MO4 | milestone | 0d | 2008-04-21 A | 2008-04-21 A | 100% | 2008-04-21 | 2008-04-21 | 0d? | start no earlier than 2008-04-21 |
| 90 | 5.6.1.5 | MO10 | milestone | 0d | 2008-04-21 A | 2008-04-21 A | 100% | 2008-04-21 | 2008-04-21 | 0d? | start no earlier than 2008-04-21 |
| 91 | 5.6.2 | **Receive RU** |  | 1d | 2008-04-04 A | 2008-04-07 A | 100% | 2008-04-04 | 2008-04-07 | 1d |  |
| 92 | 5.6.2.1 | MO1 | milestone | 0d | 2008-04-07 A | 2008-04-07 A | 100% | 2008-04-07 | 2008-04-07 | 0d? | start no earlier than 2008-04-07 |
| 93 | 5.6.2.2 | MO2 | milestone | 0d | 2008-04-04 A | 2008-04-04 A | 100% | 2008-04-04 | 2008-04-04 | 0d? | start no earlier than 2008-04-04 |
| 94 | 5.6.2.3 | MO3 | milestone | 0d | 2008-04-07 A | 2008-04-07 A | 100% | 2008-04-07 | 2008-04-07 | 0d? | start no earlier than 2008-04-07 |
| 95 | 5.6.3 | **Receive AR** |  | 9d | 2008-04-08 A | 2008-04-21 A | 100% | 2008-04-08 | 2008-04-21 | 9d |  |
| 96 | 5.6.3.1 | MO1 | milestone | 0d | 2008-04-08 A | 2008-04-08 A | 100% | 2008-04-08 | 2008-04-08 | 0d? | start no earlier than 2008-04-08 |
| 97 | 5.6.3.2 | MO2 | milestone | 0d | 2008-04-08 A | 2008-04-08 A | 100% | 2008-04-08 | 2008-04-08 | 0d? | start no earlier than 2008-04-08 |
| 98 | 5.6.3.3 | MO10 | milestone | 0d | 2008-04-21 A | 2008-04-21 A | 100% | 2008-04-21 | 2008-04-21 | 0d? | start no earlier than 2008-04-21 |
| 99 | 5.6.4 | **Receive SP** |  | 15d | 2008-04-04 A | 2008-04-25 A | 100% | 2008-04-04 | 2008-04-25 | 15d |  |
| 100 | 5.6.4.1 | MO1 | milestone | 0d | 2008-04-04 A | 2008-04-04 A | 100% | 2008-04-04 | 2008-04-04 | 0d? | start no earlier than 2008-04-04 |
| 101 | 5.6.4.2 | MO2 | milestone | 0d | 2008-04-25 A | 2008-04-25 A | 100% | 2008-04-25 | 2008-04-25 | 0d? | start no earlier than 2008-04-25 |
| 102 | 5.7 | **Content integration** |  | 15d | 2008-04-07 A | 2008-04-25 A | 100% | 2008-04-07 | 2008-04-25 | 15d |  |
| 103 | 5.7.1 | RU (MO1-MO4 & MO10) + RU Native speaker |  | 3d | 2008-04-07 A | 2008-04-09 A | 100% | 2008-04-07 | 2008-04-09 | 3d | start no earlier than 2008-04-07 |
| 104 | 5.7.2 | AR (MO1-MO4 & MO10) + AR Native speaker |  | 3d | 2008-04-14 A | 2008-04-16 A | 100% | 2008-03-24 | 2008-03-25 | 2d | start no earlier than 2008-04-14 |
| 105 | 5.7.3 | CH (MO1-MO4 ) + CH Native speaker |  | 3d | 2008-04-23 A | 2008-04-25 A | 100% | 2008-04-23 | 2008-04-25 | 3d | start no earlier than 2008-04-23 |
| 106 | 5.7.4 | SP (MO3 & MO4) |  | 2d | 2008-04-21 A | 2008-04-22 A | 100% | 2008-04-21 | 2008-04-22 | 2d | start no earlier than 2008-04-21 |

| ID | WBS | Task | Type | Duration | Start | Finish | Complete | Baseline start | Baseline finish | Baseline duration | Constraint |
| --- | --- | --- | --- | --- | --- | --- | --- | --- | --- | --- | --- |
| 107 | 5.8 | **Develop & Update documentation** |  | 29d | 2008-03-24 A | 2008-04-30 A | 100% | 2008-03-24 | 2008-04-30 | 29d |  |
| 108 | 5.8.1 | **Forms** |  | 1d | 2008-04-04 A | 2008-04-04 A | 100% | 2008-04-04 | 2008-04-04 | 1d |  |
| 109 | 5.8.1.1 | DEV.FO.01 |  | 1d | 2008-04-04 A | 2008-04-04 A | 100% | 2008-04-04 | 2008-04-04 | 1d | start no earlier than 2008-04-04 |
| 110 | 5.8.2 | **Procedures** |  | 8d | 2008-04-14 A | 2008-04-23 A | 100% | 2008-04-14 | 2008-04-23 | 8d |  |
| 111 | 5.8.2.1 | DEV.PR 01-04 |  | 8d | 2008-04-14 A | 2008-04-23 A | 100% | 2008-04-14 | 2008-04-23 | 8d | start no earlier than 2008-04-14 |
| 112 | 5.8.3 | **Instructional** |  | 15d | 2008-03-24 A | 2008-04-10 A | 100% | 2008-03-24 | 2008-04-10 | 15d |  |
| 113 | 5.8.3.1 | DEV.IN 1 & 2 |  | 4d | 2008-03-24 A | 2008-03-27 A | 100% | 2008-03-24 | 2008-03-27 | 4d | start no earlier than 2008-03-24 |
| 114 | 5.8.3.2 | DEV.IN.03 |  | 1d | 2008-04-10 A | 2008-04-10 A | 100% | 2008-04-10 | 2008-04-10 | 1d | start no earlier than 2008-04-10 |
| 115 | 5.8.4 | **Reports** |  | 2d | 2008-04-16 A | 2008-04-17 A | 100% | 2008-04-16 | 2008-04-17 | 2d |  |
| 116 | 5.8.4.1 | DEV.REP.01 |  | 2d | 2008-04-16 A | 2008-04-17 A | 100% | 2008-04-16 | 2008-04-17 | 2d | start no earlier than 2008-04-16 |
| 117 | 5.8.5 | **Template** |  | 1d | 2008-03-24 A | 2008-03-24 A | 100% | 2008-03-24 | 2008-03-24 | 1d |  |
| 118 | 5.8.5.1 | TM_BCH_documents |  | 1d | 2008-03-24 A | 2008-03-24 A | 100% | 2008-03-24 | 2008-03-24 | 1d | start no earlier than 2008-03-24 |
| 119 | 5.8.6 | **Project Management** |  | 3d | 2008-04-28 A | 2008-04-30 A | 100% | 2008-04-28 | 2008-04-30 | 3d |  |
| 120 | 5.8.6.1 | TM_BCH_MO_State & TM_BCH_Project Management |  | 3d | 2008-04-28 A | 2008-04-30 A | 100% | 2008-04-28 | 2008-04-30 | 3d | start no earlier than 2008-04-28 |
| 121 | 5.8.7 | **BCH Portal Interface** |  | 8d | 2008-04-21 A | 2008-04-30 A | 100% | 2008-04-21 | 2008-04-30 | 8d |  |
| 122 | 5.8.7.1 | TM_BCH_Site_Map & Screenshots |  | 8d | 2008-04-21 A | 2008-04-30 A | 100% | 2008-04-21 | 2008-04-30 | 8d | finish no earlier than 2008-04-30 |
| 123 | 5.9 | **Help System Building & Review** |  | 15d | 2008-04-11 A | 2008-05-02 A | 100% | 2008-04-11 | 2008-05-02 | 15d |  |
| 124 | 5.9.1 | Building (1st. Level RU ) |  | 1d | 2008-04-11 A | 2008-04-11 A | 100% | 2008-04-11 | 2008-04-11 | 1d | start no earlier than 2008-04-11 |
| 125 | 5.9.2 | Building (1st. Level AR) |  | 1d | 2008-04-18 A | 2008-04-18 A | 100% | 2008-04-03 | 2008-04-03 | 1d | start no earlier than 2008-04-18 |
| 126 | 5.9.3 | Building (1st. Level CH) |  | 1d | 2008-04-25 A | 2008-04-25 A | 100% | 2008-04-03 | 2008-04-03 | 1d | start no earlier than 2008-04-25 |
| 127 | 5.9.4 | Building (1st. Level SP) |  | 1d | 2008-04-23 A | 2008-04-23 A | 100% | 2008-04-23 | 2008-04-23 | 1d | start no earlier than 2008-04-23 |
| 128 | 5.9.5 | Publish | milestone | 0d | 2008-05-02 A | 2008-05-02 A | 100% | 2008-05-02 | 2008-05-02 | 0d? | start no earlier than 2008-05-02 |
| 129 | 6 | **CYCLE 2.1.0.** |  | 14d | 2008-05-06 A | 2008-05-23 A | 100% | 2008-05-06 | 2008-05-23 | 14d |  |
| 130 | 6.1 | **Software development** |  | 5d | 2008-05-12 A | 2008-05-16 A | 100% | 2008-05-12 | 2008-05-16 | 5d |  |
| 131 | 6.1.1 | Arabic Layaout |  | 5d | 2008-05-12 A | 2008-05-16 A | 100% | 2008-05-12 | 2008-05-16 | 5d | finish no earlier than 2008-05-16 |

| ID | WBS | Task | Type | Duration | Start | Finish | Complete | Baseline start | Baseline finish | Baseline duration | Constraint |
| --- | --- | --- | --- | --- | --- | --- | --- | --- | --- | --- | --- |
| 132 | 6.2 | **Send RA (last CBD MO Review)** |  | 7d | 2008-05-12 A | 2008-05-21 A | 100% | 2008-05-12 | 2008-05-21 | 7d |  |
| 133 | 6.2.1 | **Send RU** |  | 0d | 2008-05-12 A | 2008-05-12 A | 100% | 2008-05-12 | 2008-05-12 | 0d? |  |
| 134 | 6.2.1.1 | MO10 | milestone | 0d | 2008-05-12 A | 2008-05-12 A | 100% | 2008-05-12 | 2008-05-12 | 0d? | start no earlier than 2008-05-12 |
| 135 | 6.2.2 | **Send SP** |  | 7d | 2008-05-12 A | 2008-05-21 A | 100% | 2008-05-12 | 2008-05-21 | 7d |  |
| 136 | 6.2.2.1 | MO03 | milestone | 0d | 2008-05-12 A | 2008-05-12 A | 100% | 2008-05-12 | 2008-05-12 | 0d? | start no earlier than 2008-05-12 |
| 137 | 6.2.2.2 | MO04 | milestone | 0d | 2008-05-21 A | 2008-05-21 A | 100% | 2008-05-21 | 2008-05-21 | 0d? | start no earlier than 2008-05-21 |
| 138 | 6.2.2.3 | MO10 | milestone | 0d | 2008-05-19 A | 2008-05-19 A | 100% | 2008-05-19 | 2008-05-19 | 0d? | start no earlier than 2008-05-19 |
| 139 | 6.3 | **Receive RA (last CBD MO Review)** |  | 7d | 2008-05-13 A | 2008-05-22 A | 100% | 2008-05-13 | 2008-05-22 | 7d |  |
| 140 | 6.3.1 | **Receive RU** |  | 0d | 2008-05-13 A | 2008-05-13 A | 100% | 2008-05-13 | 2008-05-13 | 0d? |  |
| 141 | 6.3.1.1 | MO4 | milestone | 0d | 2008-05-13 A | 2008-05-13 A | 100% | 2008-05-13 | 2008-05-13 | 0d? | start no earlier than 2008-05-13 |
| 142 | 6.3.2 | **Receive AR** |  | 0d | 2008-05-22 A | 2008-05-22 A | 100% | 2008-05-22 | 2008-05-22 | 0d? |  |
| 143 | 6.3.2.1 | MO3 | milestone | 0d | 2008-05-22 A | 2008-05-22 A | 100% | 2008-05-22 | 2008-05-22 | 0d? | start no earlier than 2008-05-22 |
| 144 | 6.3.2.2 | MO04 | milestone | 0d | 2008-05-22 A | 2008-05-22 A | 100% | 2008-05-22 | 2008-05-22 | 0d? | start no earlier than 2008-05-22 |
| 145 | 6.3.3 | **Receive SP** |  | 3d | 2008-05-16 A | 2008-05-21 A | 100% | 2008-05-16 | 2008-05-21 | 3d |  |
| 146 | 6.3.3.1 | MO03 | milestone | 0d | 2008-05-16 A | 2008-05-16 A | 100% | 2008-05-16 | 2008-05-16 | 0d? | start no earlier than 2008-05-16 |
| 147 | 6.3.3.2 | MO10 | milestone | 0d | 2008-05-21 A | 2008-05-21 A | 100% | 2008-05-21 | 2008-05-21 | 0d? | start no earlier than 2008-05-21 |
| 148 | 6.4 | **Receive CBD CH MO** |  | 0d | 2008-05-07 A | 2008-05-07 A | 100% | 2008-05-07 | 2008-05-07 | 0d? |  |
| 149 | 6.4.1 | Received MO10 | milestone | 0d | 2008-05-07 A | 2008-05-07 A | 100% | 2008-05-07 | 2008-05-07 | 0d? | start no earlier than 2008-05-07 |
| 150 | 6.5 | **Content integration** |  | 2d | 2008-05-15 A | 2008-05-16 A | 100% | 2008-05-15 | 2008-05-16 | 2d |  |
| 151 | 6.5.1 | CH (MO10) + Ch Native speaker |  | 2d | 2008-05-15 A | 2008-05-16 A | 100% | 2008-05-15 | 2008-05-16 | 2d | finish no earlier than 2008-05-16 |
| 152 | 6.6 | **Develop & Update documentation** |  | 14d | 2008-05-06 A | 2008-05-23 A | 100% | 2008-05-06 | 2008-05-23 | 14d |  |
| 153 | 6.6.1 | **Reports** |  | 6d | 2008-05-06 A | 2008-05-13 A | 100% | 2008-05-06 | 2008-05-13 | 6d |  |
| 154 | 6.6.1.1 | DEV.REP.02 |  | 1d | 2008-05-06 A | 2008-05-06 A | 100% | 2008-05-06 | 2008-05-06 | 1d | start no earlier than 2008-05-06 |
| 155 | 6.6.1.2 | TM_Project_Credit (draft) |  | 1d | 2008-05-13 A | 2008-05-13 A | 100% | 2008-05-13 | 2008-05-13 | 1d | start no earlier than 2008-05-13 |

| ID | WBS | Task | Type | Duration | Start | Finish | Complete | Baseline start | Baseline finish | Baseline duration | Constraint |
| --- | --- | --- | --- | --- | --- | --- | --- | --- | --- | --- | --- |
| 156 | 6.6.2 | **Project Management** |  | 3d | 2008-05-21 A | 2008-05-23 A | 100% | 2008-05-21 | 2008-05-23 | 3d |  |
| 157 | 6.6.2.1 | TM_BCH_MO_State & TM_BCH_Project Management v2.1.0. |  | 3d | 2008-05-21 A | 2008-05-23 A | 100% | 2008-05-21 | 2008-05-23 | 3d | start no earlier than 2008-05-21 |
| 158 | 6.7 | **Help System Building & Review** |  | 1d | 2008-05-22 A | 2008-05-23 A | 100% | 2008-05-22 | 2008-05-23 | 1d |  |
| 159 | 6.7.1 | Building (Complete 1st. Level RU) |  | 1d | 2008-05-22 A | 2008-05-22 A | 100% | 2008-05-22 | 2008-05-22 | 1d | start no earlier than 2008-05-22 |
| 160 | 6.7.2 | Publish | milestone | 0d | 2008-05-23 A | 2008-05-23 A | 100% | 2008-05-23 | 2008-05-23 | 0d? | start no earlier than 2008-05-23 |
| 161 | 7 | **CYCLE 2.2.0.** |  | 20d | 2008-05-26 A | 2008-06-20 A | 100% | 2008-05-26 | 2008-05-30 | 5d |  |
| 162 | 7.1 | **Receive RA (last CBD MO Review)** |  | 0d | 2008-05-27 A | 2008-05-27 A | 100% | 2008-05-27 | 2008-05-27 | 0d? |  |
| 163 | 7.1.1 | **Receive SP** |  | 0d | 2008-05-27 A | 2008-05-27 A | 100% | 2008-05-27 | 2008-05-27 | 0d? |  |
| 164 | 7.1.1.1 | MO04 | milestone | 0d | 2008-05-27 A | 2008-05-27 A | 100% | 2008-05-27 | 2008-05-27 | 0d? | start no earlier than 2008-05-16 |
| 165 | 7.2 | **Content integration** |  | 5d | 2008-05-26 A | 2008-05-30 A | 100% | 2008-05-26 | 2008-05-30 | 5d |  |
| 166 | 7.2.1 | FR - MO1 - MO4 & MO10 |  | 3d | 2008-05-26 A | 2008-05-28 A | 100% | 2008-05-26 | 2008-05-28 | 3d | finish no earlier than 2008-05-16 |
| 167 | 7.2.2 | SP - MO1 - MO4 & MO10 |  | 3d | 2008-05-28 A | 2008-05-30 A | 100% | 2008-05-28 | 2008-05-30 | 3d | start no earlier than 2008-05-28 |
| 168 | 7.3 | **Develop & Update documentation** |  | 3d | 2008-05-26 A | 2008-05-28 A | 100% | 2008-05-26 | 2008-05-28 | 3d |  |
| 169 | 7.3.1 | **Reports** |  | 1d | 2008-05-27 A | 2008-05-27 A | 100% | 2008-05-27 | 2008-05-27 | 1d |  |
| 170 | 7.3.1.1 | DEV.REP.03 |  | 1d | 2008-05-27 A | 2008-05-27 A | 100% | 2008-05-27 | 2008-05-27 | 1d | start no earlier than 2008-05-06 |
| 171 | 7.3.2 | **Project Management** |  | 3d | 2008-05-26 A | 2008-05-28 A | 100% | 2008-05-26 | 2008-05-28 | 3d |  |
| 172 | 7.3.2.1 | TM_BCH_MO_State & TM_BCH_Project Management v2.2.0. |  | 3d | 2008-05-26 A | 2008-05-28 A | 100% | 2008-05-26 | 2008-05-28 | 3d | start no earlier than 2008-05-21 |
| 173 | 7.4 | **Help System Building & Review** |  | 16d | 2008-05-30 A | 2008-06-20 A | 100% | 2008-05-30 | 2008-05-30 | 1d |  |
| 174 | 7.4.1 | Building (Complete 1st. Level FR & SP Last SCBD review) |  | 1d | 2008-05-30 A | 2008-05-30 A | 100% | 2008-05-30 | 2008-05-30 | 1d | start no earlier than 2008-05-22 |
| 175 | 7.4.2 | Publish |  | 15d | 2008-06-02 A | 2008-06-20 A | 100% | 2008-05-30 | 2008-05-30 | 10d |  |
| 176 | 8 | **CYCLE 2.3.0.** |  | 10d | 2008-06-02 A | 2008-06-13 A | 100% | 2008-05-26 | 2008-05-30 | 5d |  |
| 177 | 8.1 | **Training Materials** |  | 5d | 2008-06-06 A | 2008-06-12 A | 100% | 2008-06-06 | 2008-06-12 | 5d |  |
| 178 | 8.1.1 | Text gathering |  | 1d | 2008-06-06 A | 2008-06-06 A | 100% | 2008-06-06 | 2008-06-06 | 1d | start no earlier than 2008-06-06 |
| 179 | 8.1.2 | List of materiales |  | 3d | 2008-06-10 A | 2008-06-12 A | 100% | 2008-06-10 | 2008-06-12 | 3d | start no earlier than 2008-06-10 |

| ID | WBS | Task | Type | Duration | Start | Finish | Complete | Baseline start | Baseline finish | Baseline duration | Constraint |
| --- | --- | --- | --- | --- | --- | --- | --- | --- | --- | --- | --- |
| 180 | 8.2 | **BCH Portal Interface** |  | 2d | 2008-06-04 A | 2008-06-05 A | 100% | 2008-04-21 | 2008-04-30 | 8d |  |
| 181 | 8.2.1 | TM_BCH_Site_Map & Screenshots |  | 2d | 2008-06-04 A | 2008-06-05 A | 100% | 2008-04-21 | 2008-04-30 | 8d | finish no earlier than 2008-04-30 |
| 182 | 8.3 | **Send RA** |  | 7d | 2008-06-02 A | 2008-06-11 A | 100% | 2008-05-27 | 2008-05-27 | 7d |  |
| 183 | 8.3.1 | **Send AR** |  | 7d | 2008-06-02 A | 2008-06-11 A | 100% | 2008-05-27 | 2008-05-27 | 7d |  |
| 184 | 8.3.1.1 | MO03 | milestone | 0d | 2008-06-02 A | 2008-06-02 A | 100% | 2008-05-27 | 2008-05-27 | 0d? | start no earlier than 2008-05-16 |
| 185 | 8.3.1.2 | MO10 | milestone | 0d | 2008-06-11 A | 2008-06-11 A | 100% | 2008-06-11 | 2008-06-11 | 0d? |  |
| 186 | 8.4 | **Receive RA** |  | 6d | 2008-06-02 A | 2008-06-10 A | 100% | 2008-05-27 | 2008-05-27 | 6d |  |
| 187 | 8.4.1 | **Receive RU (las CBD Review)** |  | 0d | 2008-06-02 A | 2008-06-02 A | 100% | 2008-05-27 | 2008-05-27 | 0d? |  |
| 188 | 8.4.1.1 | MO10 | milestone | 0d | 2008-06-02 A | 2008-06-02 A | 100% | 2008-05-27 | 2008-05-27 | 0d? | start no earlier than 2008-05-16 |
| 189 | 8.4.2 | **Receive AR reviews** |  | 0d | 2008-06-10 A | 2008-06-10 A | 100% | 2008-06-10 | 2008-06-10 | 0d? |  |
| 190 | 8.4.2.1 | MO03 | milestone | 0d | 2008-06-10 A | 2008-06-10 A | 100% | 2008-06-10 | 2008-06-10 | 0d? | start no earlier than 2008-06-10 |
| 191 | 8.4.2.2 | MO10 | milestone | 0d | 2008-06-10 A | 2008-06-10 A | 100% | 2008-06-10 | 2008-06-10 | 0d? | start no earlier than 2008-06-10 |
| 192 | 8.5 | **Content integration** |  | 9d | 2008-06-02 A | 2008-06-12 A | 100% | 2008-05-26 | 2008-05-30 | 5d |  |
| 193 | 8.5.1 | RU - MO1 - MO4 & MO10 |  | 4d | 2008-06-02 A | 2008-06-05 A | 100% | 2008-05-26 | 2008-05-28 | 3d | finish no earlier than 2008-05-16 |
| 194 | 8.5.2 | AR - MO1 - MO4 & MO10 |  | 4d | 2008-06-09 A | 2008-06-12 A | 100% | 2008-05-28 | 2008-05-30 | 3d | start no earlier than 2008-05-28 |
| 195 | 8.6 | **Review** |  | 6d | 2008-06-05 A | 2008-06-12 A | 100% | 2008-06-05 | 2008-06-12 | 6d |  |
| 196 | 8.6.1 | RU Native speaker |  | 2d | 2008-06-05 A | 2008-06-06 A | 100% | 2008-06-05 | 2008-06-06 | 2d | start no earlier than 2008-06-05 |
| 197 | 8.6.2 | AR Native speaker |  | 3d | 2008-06-10 A | 2008-06-12 A | 100% | 2008-06-10 | 2008-06-12 | 3d | finish no earlier than 2008-06-13 |
| 198 | 8.6.3 | ZH Native speaker | milestone | 0d | 2008-06-06 A | 2008-06-06 A | 100% | 2008-06-06 | 2008-06-06 | 0d? | start no earlier than 2008-06-06 |
| 199 | 8.7 | **Develop & Update documentation** |  | 9d | 2008-06-02 A | 2008-06-12 A | 100% | 2008-05-26 | 2008-05-28 | 3d |  |
| 200 | 8.7.1 | **Reports** |  | 1d | 2008-06-02 A | 2008-06-02 A | 100% | 2008-05-27 | 2008-05-27 | 1d |  |
| 201 | 8.7.1.1 | DEV.REP.03 |  | 1d | 2008-06-02 A | 2008-06-02 A | 100% | 2008-05-27 | 2008-05-27 | 1d | start no earlier than 2008-05-06 |
| 202 | 8.7.2 | **Project Management** |  | 3d | 2008-06-10 A | 2008-06-12 A | 100% | 2008-05-26 | 2008-05-28 | 3d |  |
| 203 | 8.7.2.1 | TM_BCH_MO_State & TM_BCH_Project Management v2.3.0. |  | 3d | 2008-06-10 A | 2008-06-12 A | 100% | 2008-05-26 | 2008-05-28 | 3d | start no earlier than 2008-05-21 |

Notes:
- 184: Add URls (were missing)
- 185: Add one line in (4.3 Checklist 1)
- 196: MO 1 - 4 & Mo10
- 197: Mo 1-4 & Mo10
- 198: RESOURCES:/ SUPPORT TOOLS 1,2 AND 3: support tool 3 (isn't available)

| ID | WBS | Task | Type | Duration | Start | Finish | Complete | Baseline start | Baseline finish | Baseline duration | Constraint |
| --- | --- | --- | --- | --- | --- | --- | --- | --- | --- | --- | --- |
| 204 | 8.8 | **Help System Building & Review** |  | 2d | 2008-06-12 A | 2008-06-13 A | 100% | 2008-05-30 | 2008-05-30 | 1d |  |
| 205 | 8.8.1 | Building (Complete 1st. Level RU & AR Last SCBD review) |  | 1d | 2008-06-12 A | 2008-06-12 A | 100% | 2008-05-30 | 2008-05-30 | 1d | start no earlier than 2008-05-22 |
| 206 | 8.8.2 | Building (2nd level - "BCH" and "The Protocol" in 6 UN languages) |  | 1d | 2008-06-13 A | 2008-06-13 A | 100% | 2008-06-13 | 2008-06-13 | 1d | start no earlier than 2008-06-13 |
| 207 | 8.8.3 | Publish | milestone | 0d | 2008-06-13 A | 2008-06-13 A | 100% | 2008-05-30 | 2008-05-30 | 0d? | start no earlier than 2008-05-23 |
| 208 | 9 | **CYCLE 2.3.1.** |  | 5d | 2008-06-16 A | 2008-06-20 A | 100% | 2008-05-26 | 2008-05-30 | 5d |  |
| 209 | 9.1 | **Moodle** |  | 5d | 2008-06-16 A | 2008-06-20 A | 100% | 2008-06-06 | 2008-06-12 | 5d |  |
| 210 | 9.1.1 | Inventory of training materials |  | 1d | 2008-06-16 A | 2008-06-16 A | 100% | 2008-06-16 | 2008-06-16 | 1d | start no earlier than 2008-06-16 |
| 211 | 9.1.2 | Text gathering form training materials (6 UN languages) |  | 1d | 2008-06-18 A | 2008-06-18 A | 100% | 2008-06-06 | 2008-06-06 | 1d | start no earlier than 2008-06-06 |
| 212 | 9.1.3 | Create code documents for traning materials ( 6 UN languages) |  | 2d | 2008-06-19 A | 2008-06-20 A | 100% | 2008-06-19 | 2008-06-20 | 2d | start no earlier than 2008-06-19 |
| 213 | 9.1.4 | Convert English / Spanish to pdf documents |  | 1d | 2008-06-19 A | 2008-06-19 A | 100% | 2008-06-19 | 2008-06-19 | 1d | start no earlier than 2008-06-19 |
| 214 | 9.1.5 | English/ Spanish encoding documents |  | 1d | 2008-06-20 A | 2008-06-20 A | 100% | 2008-06-20 | 2008-06-20 | 1d | start no earlier than 2008-06-20 |
| 215 | 9.1.6 | Update Moodle (English & Spanish) |  | 1d | 2008-06-20 A | 2008-06-20 A | 100% | 2008-06-20 | 2008-06-20 | 1d | start no earlier than 2008-06-20 |
| 216 | 9.2 | **Help System Building & Review** |  | 1d | 2008-06-20 A | 2008-06-20 A | 100% | 2008-05-30 | 2008-05-30 | 1d |  |
| 217 | 9.2.1 | Training materials topics were updated, reflecting the changes in moodle (English & Spanish) |  | 1d | 2008-06-20 A | 2008-06-20 A | 100% | 2008-05-30 | 2008-05-30 | 1d | start no earlier than 2008-05-22 |
| 218 | 9.2.2 | Publish | milestone | 0d | 2008-06-20 A | 2008-06-20 A | 100% | 2008-05-30 | 2008-05-30 | 0d? | start no earlier than 2008-05-23 |
| 219 | 10 | **CYCLE 2.3.2.** |  | 10d | 2008-06-23 A | 2008-07-04 A | 100% | 2008-05-26 | 2008-05-30 | 5d |  |
| 220 | 10.1 | **Help System documents** |  | 4d | 2008-06-23 A | 2008-06-26 A | 100% | 2008-06-23 | 2008-06-26 | 4d |  |
| 221 | 10.1.1 | Pdf documents automatically created from Help system (Test version) |  | 2d | 2008-06-23 A | 2008-06-24 A | 100% | 2008-06-23 | 2008-06-24 | 2d | start no earlier than 2008-06-23 |
| 222 | 10.1.2 | Pdf Document reference updated (Test version) |  | 2d | 2008-06-25 A | 2008-06-26 A | 100% | 2008-06-25 | 2008-06-26 | 2d | start no earlier than 2008-06-25 |
| 223 | 10.2 | **Installer** |  | 2d | 2008-06-26 A | 2008-06-27 A | 100% | 2008-06-26 | 2008-06-27 | 2d |  |
| 224 | 10.2.1 | Installer for interactive module 1 (English) |  | 2d | 2008-06-26 A | 2008-06-27 A | 100% | 2008-06-26 | 2008-06-27 | 2d | start no earlier than 2008-06-26 |
| 225 | 10.3 | **Moodle** |  | 5d | 2008-06-30 A | 2008-07-04 A | 100% | 2008-06-06 | 2008-06-12 | 5d |  |
| 226 | 10.3.1 | English & Spanish - training material revision |  | 1d | 2008-06-30 A | 2008-06-30 A | 100% | 2008-06-06 | 2008-06-06 | 1d | start no earlier than 2008-06-06 |
| 227 | 10.3.2 | New structure for English & Spanish - training materials |  | 2d | 2008-07-01 A | 2008-07-02 A | 100% | 2008-07-01 | 2008-07-02 | 2d | start no earlier than 2008-06-16 |
| 228 | 10.3.3 | Update Moodle (English & Spanish) |  | 2d | 2008-07-03 A | 2008-07-04 A | 100% | 2008-07-03 | 2008-07-04 | 2d | start no earlier than 2008-06-20 |

| ID | WBS | Task | Type | Duration | Start | Finish | Complete | Baseline start | Baseline finish | Baseline duration | Constraint |
| --- | --- | --- | --- | --- | --- | --- | --- | --- | --- | --- | --- |
| 229 | 10.3.4 | **Installer** |  | 3d | 2008-07-01 A | 2008-07-03 A | 100% | 2008-07-01 | 2008-07-03 | 3d |  |
| 230 | 10.3.4.1 | Installer for interactive module 1& 2 (English, Spanish & French) |  | 3d | 2008-07-01 A | 2008-07-03 A | 100% | 2008-07-01 | 2008-07-03 | 3d | start no earlier than 2008-07-01 |
| 231 | 10.4 | **Help System Building & Review** |  | 1d | 2008-07-04 A | 2008-07-04 A | 100% | 2008-05-30 | 2008-05-30 | 1d |  |
| 232 | 10.4.1 | Training materials were updated, reflecting new structure moodle English |  | 1d | 2008-07-04 A | 2008-07-04 A | 100% | 2008-05-30 | 2008-05-30 | 1d | start no earlier than 2008-05-22 |
| 233 | 10.4.2 | Publish | milestone | 0d | 2008-07-04 A | 2008-07-04 A | 100% | 2008-05-30 | 2008-05-30 | 0d? | start no earlier than 2008-05-23 |
| 234 | 11 | **CYCLE 2.3.3.** |  | 5d | 2008-07-07 A | 2008-07-11 A | 100% |  |  |  |  |
| 235 | 11.1 | **Send RA (transalation Web Training material)** |  | 0d | 2008-07-07 A | 2008-07-07 A | 100% |  |  |  |  |
| 236 | 11.1.1 | Send AR | milestone | 0d | 2008-07-07 A | 2008-07-07 A | 100% |  |  |  | start no earlier than 2008-07-07 |
| 237 | 11.1.2 | Send RU | milestone | 0d | 2008-07-07 A | 2008-07-07 A | 100% |  |  |  | start no earlier than 2008-07-07 |
| 238 | 11.2 | **Receive RA (transalation Web Training material)** |  | 0d | 2008-07-08 A | 2008-07-08 A | 100% |  |  |  |  |
| 239 | 11.2.1 | Receive AR | milestone | 0d | 2008-07-08 A | 2008-07-08 A | 100% |  |  |  | start no earlier than 2008-07-08 |
| 240 | 11.3 | **Moodle** |  | 4d | 2008-07-07 A | 2008-07-10 A | 100% |  |  |  |  |
| 241 | 11.3.1 | French - training material revision |  | 1d | 2008-07-07 A | 2008-07-07 A | 100% |  |  |  | start no earlier than 2008-07-07 |
| 242 | 11.3.2 | New structure for French - training materials |  | 1d | 2008-07-08 A | 2008-07-08 A | 100% |  |  |  | start no earlier than 2008-07-08 |
| 243 | 11.3.3 | Translation to french moodle sections |  | 1d | 2008-07-10 A | 2008-07-10 A | 100% |  |  |  | start no earlier than 2008-07-10 |
| 244 | 11.4 | **Help System documents** |  | 4d | 2008-07-08 A | 2008-07-11 A | 100% | 2008-06-23 | 2008-06-26 | 4d |  |
| 245 | 11.4.1 | **Pdf documents automatically created from Help system** |  | 4d | 2008-07-08 A | 2008-07-11 A | 100% | 2008-06-23 | 2008-06-24 | 2d |  |
| 246 | 11.4.1.1 | MO01 in 6 UN languages |  | 4d | 2008-07-08 A | 2008-07-11 A | 100% |  |  |  | start no earlier than 2008-07-08 |
| 247 | 11.5 | **Project Management** |  | 1d | 2008-07-11 A | 2008-07-11 A | 100% |  |  |  |  |
| 248 | 11.5.1 | TM_BCH_MO_State_pdf & TM_BCH_Project Management v2.3.3. |  | 1d | 2008-07-11 A | 2008-07-11 A | 100% |  |  |  | start no earlier than 2008-07-11 |
| 249 | 11.6 | **BCH Portal Interface** |  | 2d | 2008-07-09 A | 2008-07-10 A | 100% |  |  |  |  |
| 250 | 11.6.1 | TM_BCH_Site_Map & Screenshots |  | 2d | 2008-07-09 A | 2008-07-10 A | 100% |  |  |  | start no earlier than 2008-07-09 |
| 251 | 11.7 | **Help System Building & Review** |  | 5d | 2008-07-07 A | 2008-07-11 A | 100% |  |  |  |  |
| 252 | 11.7.1 | Training materials were updated, reflecting new structure moodle Spanish |  | 1d | 2008-07-07 A | 2008-07-07 A | 100% |  |  |  | start no earlier than 2008-07-07 |
| 253 | 11.7.2 | Building (2nd level - "Finding information" in 6 UN languages) |  | 1d | 2008-07-11 A | 2008-07-11 A | 100% |  |  |  | start no earlier than 2008-07-11 |
| 254 | 11.7.3 | Publish | milestone | 0d | 2008-07-11 A | 2008-07-11 A | 100% |  |  |  | start no earlier than 2008-07-11 |

| ID | WBS | Task | Type | Duration | Start | Finish | Complete | Baseline start | Baseline finish | Baseline duration | Constraint |
| --- | --- | --- | --- | --- | --- | --- | --- | --- | --- | --- | --- |
| 255 | 12 | **CYCLE 2.3.4.** |  | 4d | 2008-07-14 A | 2008-07-17 A | 100% |  |  |  |  |
| 256 | 12.1 | **Receive RA (transalation Web Training material)** |  | 0d | 2008-07-17 A | 2008-07-17 A | 100% |  |  |  |  |
| 257 | 12.1.1 | Receive Ru | milestone | 0d | 2008-07-17 A | 2008-07-17 A | 100% |  |  |  | start no earlier than 2008-07-17 |
| 258 | 12.2 | **Moodle** |  | 3d | 2008-07-14 A | 2008-07-16 A | 100% |  |  |  |  |
| 259 | 12.2.1 | Arab inventory training material |  | 1d | 2008-07-14 A | 2008-07-14 A | 100% |  |  |  | start no earlier than 2008-07-14 |
| 260 | 12.2.2 | Russian inventory training material |  | 1d | 2008-07-15 A | 2008-07-15 A | 100% |  |  |  | start no earlier than 2008-07-15 |
| 261 | 12.2.3 | English & Spanish training material revision |  | 1d | 2008-07-16 A | 2008-07-16 A | 100% |  |  |  | start no earlier than 2008-07-16 |
| 262 | 12.3 | **Help System documents** |  | 4d | 2008-07-14 A | 2008-07-17 A | 100% | 2008-06-23 | 2008-06-26 | 4d |  |
| 263 | 12.3.1 | **Pdf documents automatically created from Help system** |  | 4d | 2008-07-14 A | 2008-07-17 A | 100% | 2008-06-23 | 2008-06-24 | 2d |  |
| 264 | 12.3.1.1 | MO01 (En;Fr;Es;Ru) |  | 4d | 2008-07-14 A | 2008-07-17 A | 100% |  |  |  | start no earlier than 2008-07-14 |
| 265 | 12.3.1.2 | M002 (En;Fr;Es;Ru;Zh) |  | 2d | 2008-07-15 A | 2008-07-16 A | 100% |  |  |  | start no earlier than 2008-07-15 |
| 266 | 12.4 | **Project Management** |  | 1d | 2008-07-17 A | 2008-07-17 A | 100% |  |  |  |  |
| 267 | 12.4.1 | TM_BCH_MO_State_pdf & TM_BCH_Project Management v2.3.4. |  | 1d | 2008-07-17 A | 2008-07-17 A | 100% |  |  |  | start no earlier than 2008-07-17 |
| 268 | 12.5 | **BCH Portal Interface** |  | 1d | 2008-07-17 A | 2008-07-17 A | 100% |  |  |  |  |
| 269 | 12.5.1 | TM_BCH_Site_Map & Screenshots |  | 1d | 2008-07-17 A | 2008-07-17 A | 100% |  |  |  | start no earlier than 2008-07-17 |
| 270 | 12.6 | **Help System Building & Review** |  | 1d | 2008-07-17 A | 2008-07-17 A | 100% |  |  |  |  |
| 271 | 12.6.1 | Building (2nd level - "Resources" in 6 UN languages) |  | 1d | 2008-07-17 A | 2008-07-17 A | 100% |  |  |  | start no earlier than 2008-07-17 |
| 272 | 12.6.2 | Publish | milestone | 0d | 2008-07-17 A | 2008-07-17 A | 100% |  |  |  | start no earlier than 2008-07-17 |
| 273 | 13 | **CYCLE 3.0.0.** |  | 5d | 2008-07-21 A | 2008-07-25 A | 100% |  |  |  |  |
| 274 | 13.1 | **Receive RA (Training material for translation)** |  | 0d | 2008-07-21 A | 2008-07-21 A | 100% |  |  |  |  |
| 275 | 13.1.1 | Receive Fr | milestone | 0d | 2008-07-21 A | 2008-07-21 A | 100% |  |  |  | start no earlier than 2008-07-21 |
| 276 | 13.2 | **Moodle** |  | 5d | 2008-07-21 A | 2008-07-25 A | 100% |  |  |  |  |
| 277 | 13.2.1 | create russian structure |  | 2d | 2008-07-21 A | 2008-07-22 A | 100% |  |  |  | start no earlier than 2008-07-21 |
| 278 | 13.2.2 | generate pdf russian documents (already translated) |  | 1d | 2008-07-23 A | 2008-07-23 A | 100% |  |  |  | start no earlier than 2008-07-23 |
| 279 | 13.2.3 | Update with PDF help system automatic generation Mo1-4&10 in En;Fr;Es |  | 1d | 2008-07-25 A | 2008-07-25 A | 100% |  |  |  | start no earlier than 2008-07-25 |
| 280 | 13.2.4 | Update Guidance documents En,Es |  | 1d | 2008-07-24 A | 2008-07-24 A | 100% |  |  |  | start no earlier than 2008-07-24 |
| 281 | 13.2.5 | Review, checked links in French version |  | 1d | 2008-07-24 A | 2008-07-24 A | 100% |  |  |  | start no earlier than 2008-07-24 |

| ID | WBS | Task | Type | Duration | Start | Finish | Complete | Baseline start | Baseline finish | Baseline duration | Constraint |
| --- | --- | --- | --- | --- | --- | --- | --- | --- | --- | --- | --- |
| 282 | 13.3 | **Help System documents** |  | 4d | 2008-07-21 A | 2008-07-24 A | 100% | 2008-06-23 | 2008-06-26 | 4d |  |
| 283 | 13.3.1 | **Pdf documents automatically created from Help system** |  | 4d | 2008-07-21 A | 2008-07-24 A | 100% | 2008-06-23 | 2008-06-24 | 2d |  |
| 284 | 13.3.1.1 | MO03 (En;Fr;Es;Ru) |  | 3d | 2008-07-21 A | 2008-07-23 A | 100% |  |  |  | start no earlier than 2008-07-21 |
| 285 | 13.3.1.2 | M004 (En;Fr;Es;Ru) |  | 3d | 2008-07-22 A | 2008-07-24 A | 100% |  |  |  | start no earlier than 2008-07-22 |
| 286 | 13.3.1.3 | MO10(En,Fr,Es,Ru) |  | 1d | 2008-07-23 A | 2008-07-23 A | 100% |  |  |  | start no earlier than 2008-07-23 |
| 287 | 13.3.2 | Update Guidance document (EN& Es) |  | 1d | 2008-07-24 A | 2008-07-24 A | 100% |  |  |  | start no earlier than 2008-07-24 |
| 288 | 13.4 | **Project Management** |  | 1d | 2008-07-25 A | 2008-07-25 A | 100% |  |  |  |  |
| 289 | 13.4.1 | TM_BCH_MO_State_pdf & TM_BCH_Project Management v3.0.0.. |  | 1d | 2008-07-25 A | 2008-07-25 A | 100% |  |  |  | start no earlier than 2008-07-25 |
| 290 | 13.5 | **BCH Portal Interface** |  | 1d | 2008-07-25 A | 2008-07-25 A | 100% |  |  |  |  |
| 291 | 13.5.1 | TM_BCH_Site_Map & Screenshots |  | 1d | 2008-07-25 A | 2008-07-25 A | 100% |  |  |  | start no earlier than 2008-07-25 |
| 292 | 13.6 | **Help System Building & Review** |  | 2d | 2008-07-24 A | 2008-07-25 A | 100% |  |  |  |  |
| 293 | 13.6.1 | Building (2nd level - "Help / Interoperatibility Service" " in 6 UN languages) |  | 1d | 2008-07-25 A | 2008-07-25 A | 100% |  |  |  | start no earlier than 2008-07-25 |
| 294 | 13.6.2 | Building French "Training Materials" |  | 1d | 2008-07-24 A | 2008-07-24 A | 100% |  |  |  | start no earlier than 2008-07-24 |
| 295 | 13.6.3 | Publish | milestone | 0d | 2008-07-25 A | 2008-07-25 A | 100% |  |  |  | start no earlier than 2008-07-25 |
| 296 | 14 | **CYCLE 3.0.1.** |  | 4d | 2008-07-28 A | 2008-07-31 A | 100% |  |  |  |  |
| 297 | 14.1 | **Receive RA** |  | 1d | 2008-07-28 A | 2008-07-29 A | 100% |  |  |  |  |
| 298 | 14.1.1 | Receive Ru (pdf translation) | milestone | 0d | 2008-07-28 A | 2008-07-28 A | 100% |  |  |  | start no earlier than 2008-07-28 |
| 299 | 14.1.2 | Receive FR (Training Materials Translations) | milestone | 0d | 2008-07-29 A | 2008-07-29 A | 100% |  |  |  | start no earlier than 2008-07-29 |
| 300 | 14.2 | **Moodle** |  | 2d | 2008-07-29 A | 2008-07-30 A | 100% |  |  |  |  |
| 301 | 14.2.1 | Upload Rusian pdf documents |  | 2d | 2008-07-29 A | 2008-07-30 A | 100% |  |  |  | start no earlier than 2008-07-29 |
| 302 | 14.2.2 | Review, checked links in Russian version |  | 1d | 2008-07-30 A | 2008-07-30 A | 100% |  |  |  | start no earlier than 2008-07-30 |
| 303 | 14.3 | **Help System documents** |  | 2d | 2008-07-29 A | 2008-07-30 A | 100% | 2008-06-23 | 2008-06-26 | 4d |  |
| 304 | 14.3.1 | **Pdf documents automatically created from Help system** |  | 1d | 2008-07-29 A | 2008-07-29 A | 100% | 2008-06-23 | 2008-06-24 | 2d |  |
| 305 | 14.3.1.1 | MO03 (Zh) |  | 1d | 2008-07-29 A | 2008-07-29 A | 100% |  |  |  | start no earlier than 2008-07-29 |
| 306 | 14.3.1.2 | M004 (Zh) |  | 1d | 2008-07-29 A | 2008-07-29 A | 100% |  |  |  | start no earlier than 2008-07-29 |
| 307 | 14.3.2 | Update Ready Reference #6 (EN& Es) |  | 1d | 2008-07-30 A | 2008-07-30 A | 100% |  |  |  | start no earlier than 2008-07-30 |
| 308 | 14.3.3 | CD Training Materials |  | 1d | 2008-07-29 A | 2008-07-29 A | 100% |  |  |  | start no earlier than 2008-07-29 |

| ID | WBS | Task | Type | Duration | Start | Finish | Complete | Baseline start | Baseline finish | Baseline duration | Constraint |
| --- | --- | --- | --- | --- | --- | --- | --- | --- | --- | --- | --- |
| 309 | 14.4 | **Project Management** |  | 1d | 2008-07-31 A | 2008-07-31 A | 100% |  |  |  |  |
| 310 | 14.4.1 | TM_BCH_MO_State_pdf & TM_BCH_Project Management v3.0.1 |  | 1d | 2008-07-31 A | 2008-07-31 A | 100% |  |  |  | start no earlier than 2008-07-31 |
| 311 | 14.5 | **Help System Building & Review** |  | 1d | 2008-07-31 A | 2008-07-31 A | 100% |  |  |  |  |
| 312 | 14.5.1 | Building Russian "Training Materials" |  | 1d | 2008-07-31 A | 2008-07-31 A | 100% |  |  |  | start no earlier than 2008-07-31 |
| 313 | 14.5.2 | Publish | milestone | 0d | 2008-07-31 A | 2008-07-31 A | 100% |  |  |  | start no earlier than 2008-07-31 |
| 314 | 15 | **CYCLE 3.1.1.** |  | 5d? | 2008-08-04 A | 2008-08-08 A | 100% |  |  |  |  |
| 315 | 15.1 | **Moodle** |  | 4d | 2008-08-04 A | 2008-08-07 A | 100% |  |  |  |  |
| 316 | 15.1.1 | Upload French pdf documents |  | 1d | 2008-08-04 A | 2008-08-04 A | 100% |  |  |  | start no earlier than 2008-08-04 |
| 317 | 15.1.2 | Review, checked links in French version |  | 1d | 2008-08-05 A | 2008-08-05 A | 100% |  |  |  | start no earlier than 2008-08-05 |
| 318 | 15.1.3 | Create Arabic structure / text |  | 2d | 2008-08-05 A | 2008-08-06 A | 100% |  |  |  | start no earlier than 2008-08-05 |
| 319 | 15.1.4 | Inventory and new code assigned to each document |  | 1d | 2008-08-07 A | 2008-08-07 A | 100% |  |  |  | start no earlier than 2008-08-07 |
| 320 | 15.2 | **Help System documents** |  | 4d? | 2008-08-04 A | 2008-08-07 A | 100% | 2008-06-23 | 2008-06-26 | 4d |  |
| 321 | 15.2.1 | **CD Training Materials (ISO Image)** |  | 4d? | 2008-08-04 A | 2008-08-07 A | 100% |  |  |  |  |
| 322 | 15.2.1.1 | English, French & Spanish |  | 3d | 2008-08-04 A | 2008-08-06 A | 100% |  |  |  | start no earlier than 2008-08-04 |
| 323 | 15.2.1.2 | Review CD training materials & link to the BCH help System |  | 1d? | 2008-08-07 A | 2008-08-07 A | 100% |  |  |  | start no earlier than 2008-08-07 |
| 324 | 15.3 | **Project Management** |  | 1d | 2008-08-08 A | 2008-08-08 A | 100% |  |  |  |  |
| 325 | 15.3.1 | TM_BCH_MO_State_pdf & TM_BCH_Project Management v3.1.1 |  | 1d | 2008-08-08 A | 2008-08-08 A | 100% |  |  |  | start no earlier than 2008-08-08 |
| 326 | 15.4 | **Help System Building & Review** |  | 1d | 2008-08-08 A | 2008-08-08 A | 100% |  |  |  |  |
| 327 | 15.4.1 | Building French "Training Materials" & link to ISO images EN,SP,FR |  | 1d | 2008-08-08 A | 2008-08-08 A | 100% |  |  |  | start no earlier than 2008-08-08 |
| 328 | 15.4.2 | Publish | milestone | 0d | 2008-08-08 A | 2008-08-08 A | 100% |  |  |  | start no earlier than 2008-08-08 |
| 329 | 16 | **CYCLE 3.2.0.** |  | 5d | 2008-08-11 A | 2008-08-15 A | 100% |  |  |  |  |
| 330 | 16.1 | **Receive RA (Training material for translation)** |  | 0d | 2008-08-14 A | 2008-08-14 A | 100% |  |  |  |  |
| 331 | 16.1.1 | Receive Ru | milestone | 0d | 2008-08-14 A | 2008-08-14 A | 100% |  |  |  | start no earlier than 2008-07-21 |
| 332 | 16.2 | **Moodle** |  | 2d | 2008-08-11 A | 2008-08-12 A | 100% |  |  |  |  |
| 333 | 16.2.1 | Generate pdf arabic & Ru documents |  | 1d | 2008-08-11 A | 2008-08-11 A | 100% |  |  |  | start no earlier than 2008-07-21 |
| 334 | 16.2.2 | upload Ar/Ru documents |  | 1d | 2008-08-11 A | 2008-08-11 A | 100% |  |  |  | start no earlier than 2008-07-23 |
| 335 | 16.2.3 | Review, checked links |  | 1d | 2008-08-12 A | 2008-08-12 A | 100% |  |  |  | start no earlier than 2008-07-24 |

| ID | WBS | Task | Type | Duration | Start | Finish | Complete | Baseline start | Baseline finish | Baseline duration | Constraint |
| --- | --- | --- | --- | --- | --- | --- | --- | --- | --- | --- | --- |
| 336 | 16.3 | **Help System documents** |  | 2d | 2008-08-13 A | 2008-08-14 A | 100% | 2008-06-23 | 2008-06-26 | 4d |  |
| 337 | 16.3.1 | Reviewed and improved Pdf documents automatically created from Help system |  | 2d | 2008-08-13 A | 2008-08-14 A | 100% | 2008-06-23 | 2008-06-24 | 2d |  |
| 338 | 16.3.2 | **Update document** |  | 1d | 2008-08-14 A | 2008-08-14 A | 100% |  |  |  |  |
| 339 | 16.3.2.1 | Ready Reference #13 updated in (En,Sp &Fr) |  | 1d | 2008-08-14 A | 2008-08-14 A | 100% |  |  |  | start no earlier than 2008-08-14 |
| 340 | 16.4 | **Project Management** |  | 2d | 2008-08-14 A | 2008-08-15 A | 100% |  |  |  |  |
| 341 | 16.4.1 | TM_BCH_Training_Material _State |  | 1d | 2008-08-14 A | 2008-08-14 A | 100% |  |  |  | start no earlier than 2008-07-25 |
| 342 | 16.4.2 | TM_BCH_Project Management v3.2.0. & release note |  | 1d | 2008-08-15 A | 2008-08-15 A | 100% |  |  |  | start no earlier than 2008-08-15 |
| 343 | 16.5 | **Help Studio** |  | 1d | 2008-08-13 A | 2008-08-13 A | 100% |  |  |  |  |
| 344 | 16.5.1 | New version installed |  | 1d | 2008-08-13 A | 2008-08-13 A | 100% |  |  |  | start no earlier than 2008-08-13 |
| 345 | 16.5.2 | Templates & plug-ins (were reviewed) | milestone | 0d | 2008-08-13 A | 2008-08-13 A | 100% |  |  |  | start no earlier than 2008-08-13 |
| 346 | 16.6 | **Help System Building & Review** |  | 1d | 2008-08-15 A | 2008-08-15 A | 100% |  |  |  |  |
| 347 | 16.6.1 | Building Arabic "Training Materials" |  | 1d | 2008-08-15 A | 2008-08-15 A | 100% |  |  |  | start no earlier than 2008-07-24 |
| 348 | 16.6.2 | Publish | milestone | 0d | 2008-08-15 A | 2008-08-15 A | 100% |  |  |  | start no earlier than 2008-07-25 |
| 349 | 17 | **CYCLE 3.3.0.** |  | 5d | 2008-08-18 A | 2008-08-22 A | 100% |  |  |  |  |
| 350 | 17.1 | **Send RA (transalation Web Training material)** |  | 0d | 2008-08-20 A | 2008-08-20 A | 100% |  |  |  |  |
| 351 | 17.1.1 | Send Ar | milestone | 0d | 2008-08-20 A | 2008-08-20 A | 100% |  |  |  | start no earlier than 2008-08-20 |
| 352 | 17.2 | **Receive RA (Training material for translation)** |  | 0d | 2008-08-22 A | 2008-08-22 A | 100% |  |  |  |  |
| 353 | 17.2.1 | Receive Ar | milestone | 0d | 2008-08-22 A | 2008-08-22 A | 100% |  |  |  | start no earlier than 2008-07-21 |
| 354 | 17.3 | **Moodle** |  | 3d | 2008-08-18 A | 2008-08-20 A | 100% |  |  |  |  |
| 355 | 17.3.1 | Generate pdf Ru documents (RR # 8 & 13) |  | 1d | 2008-08-18 A | 2008-08-18 A | 100% |  |  |  | start no earlier than 2008-07-21 |
| 356 | 17.3.2 | upload Ar/Ru documents |  | 1d | 2008-08-19 A | 2008-08-19 A | 100% |  |  |  | start no earlier than 2008-07-23 |
| 357 | 17.3.3 | Review, checked links |  | 1d | 2008-08-20 A | 2008-08-20 A | 100% |  |  |  | start no earlier than 2008-07-24 |
| 358 | 17.4 | **Help system document** |  | 5d | 2008-08-18 A | 2008-08-22 A | 100% |  |  |  |  |
| 359 | 17.4.1 | **Procedure & documentation** |  | 5d | 2008-08-18 A | 2008-08-22 A | 100% |  |  |  |  |
| 360 | 17.4.1.1 | DEV.PR. 05, 007 & 08 |  | 3d | 2008-08-18 A | 2008-08-20 A | 100% |  |  |  | start no earlier than 2008-08-20 |
| 361 | 17.4.1.2 | Ready Reference #13, 8 updated in (Ru) |  | 1d | 2008-08-22 A | 2008-08-22 A | 100% |  |  |  | start no earlier than 2008-08-22 |

| ID | WBS | Task | Type | Duration | Start | Finish | Complete | Constraint |
| --- | --- | --- | --- | --- | --- | --- | --- | --- |
| 362 | 17.4.2 | **CD Training Materials (ISO Image)** |  | 2d | 2008-08-21 A | 2008-08-22 A | 100% |  |
| 363 | 17.4.2.1 | Russian |  | 1d | 2008-08-21 A | 2008-08-21 A | 100% |  |
| 364 | 17.4.2.2 | Review CD training materials & link to the BCH help System |  | 1d | 2008-08-22 A | 2008-08-22 A | 100% |  |
| 365 | 17.4.3 | **Help system** |  | 1d | 2008-08-21 A | 2008-08-21 A | 100% |  |
| 366 | 17.4.3.1 | Topic search was fixed (russian language) |  | 1d | 2008-08-21 A | 2008-08-21 A | 100% | start no earlier than 2008-08-21 |
| 367 | 17.5 | **Project Management** |  | 1d | 2008-08-21 A | 2008-08-21 A | 100% |  |
| 368 | 17.5.1 | TM_BCH_Training_Material _State |  | 1d | 2008-08-21 A | 2008-08-21 A | 100% | start no earlier than 2008-07-25 |
| 369 | 17.5.2 | TM_BCH_Project Management v3.3.0. & release note |  | 1d | 2008-08-21 A | 2008-08-21 A | 100% | start no earlier than 2008-08-21 |
| 370 | 17.6 | **Help System Building & Review** |  | 1d | 2008-08-22 A | 2008-08-22 A | 100% |  |
| 371 | 17.6.1 | Building Ru |  | 1d | 2008-08-22 A | 2008-08-22 A | 100% | start no earlier than 2008-07-24 |
| 372 | 17.6.2 | Publish | milestone | 0d | 2008-08-22 A | 2008-08-22 A | 100% | start no earlier than 2008-07-25 |
